week_start,phase,activity,audience,channel,owner_role,deliverable,kpi,depends_on,status
2026-10-26,Oct 2026,R00: До 01.11 опубликовать стартовое сообщение: что известно о проекте; что ещё не решено; контакт для вопросов; дата следующего обновления,Жители; градозащитники; архитекторы; арендаторы; культурные пользователи; журналисты; широкая публика,Существующий сайт и каналы заказчика,Руководитель коммуникационной кампании; представитель заказчика,Опубликованное сообщение со ссылками на документы; работающий адрес для вопросов,Опубликовано не позднее 01.11; каждое утверждение о сохранении и сносе имеет документ или помечено как неподтверждённое; дата следующего обновления названа,PRE01,draft
2026-11-02,Nov 2026,R01: Проверить стартовый пакет и собрать документы для раскрытия параметров проекта,Заказчик; проектная команда,Рабочая встреча и реестр документов,Руководитель коммуникационной кампании,Перечень доступных документов; пробелов и разрешённых к публикации сведений,Каждое утверждение о сохранении и сносе связано с документом или отмечено как неподтверждённое,PRE01,draft
2026-11-02,Nov 2026,R02: Настроить учёт публичных упоминаний и обращений; уточнить карту аудиторий,Жители; градозащитники; архитекторы; арендаторы; культурные пользователи; журналисты,Публичные источники и действующая приёмная заказчика,Аналитик и специалист по обращениям,Исходный замер; карта аудиторий; журнал обращений без публикации персональных данных,Зафиксированы период; источники; объём выборки и правила разметки; целевые показатели согласуются после замера,PRE01,draft
2026-11-02,Nov 2026,R03: Запросить сметы и утвердить распределение работ между командой и подрядчиками,Заказчик; закупки; бухгалтерия,Рабочая смета,Руководитель коммуникационной кампании,Проект бюджета с занятостью; налогами и резервом для согласования 09–13.11,Договоры заключаются после проверки полной суммы не выше 10000000 рублей,PRE01,draft
2026-11-02,Nov 2026,"R34: Объявлять каждый видимый шаг разборки заранее (до выхода техники): что разбирают, почему, что сохраняется; первые фото с площадки публикует компания",Жители; градозащитники; журналисты; широкая публика,Страница проекта; районные сообщества; рассылка журналистам,Руководитель коммуникационной кампании; представитель заказчика (график работ),Заметка о каждом шаге с фото и ссылкой на схему,Каждый шаг объявлен не позднее чем за пять рабочих дней; ни один шаг не стал известен сначала из фото жителей,PRE02; R01,draft
2026-11-09,Nov 2026,R04: Подготовить поясняющий пакет и программу первой открытой встречи,Жители; градозащитники; архитекторы; арендаторы; культурные пользователи,Проект раздела на существующем сайте; памятка; программа встречи,Редактор и специалист по работе со средствами массовой информации,Черновик схемы сохранения и сноса; вопросы и ответы; тексты приглашения; задания на печать и видео,Формулировки различают сохранение; снос; воспроизведение и новое строительство; пробелы обозначены,R01;R02,draft
2026-11-09,Nov 2026,R05: Согласовать бюджет и закупки; зарезервировать исполнителей без начала производства,Заказчик; закупки; бухгалтерия,Внутреннее согласование 09–13.11,Представитель заказчика,Согласованный лимит и перечень исполнителей,Каждая работа имеет одного плательщика; исключён двойной учёт зарплат и подрядных услуг,R03,draft
2026-11-09,Nov 2026,"R31: Провести исходный онлайн-опрос жителей ВАО (400 анкет, квота Преображенского и Соколиной Горы)",Жители района и соседних районов,Онлайн-панель подрядчика,Аналитик и специалист по обращениям,Анкета; описание выборки; доли знания проекта и отношения по возрасту и району,"400 заполненных анкет до 27.11; для каждой доли указаны выборка, период и ограничения панели; целевые показатели кампании согласуются после замера",R02; B065,draft
2026-11-16,Nov 2026,R06: Провести фактическую; экспертную и клиентскую проверку поясняющего пакета,Заказчик; проектная команда; профильные специалисты,Письменное согласование 16–20.11,Представитель заказчика,Согласованные тексты; схема; приглашение и программа первой встречи,Публикация разрешена письменно; при пробелах указано что пока нельзя подтвердить; срок проверки пять рабочих дней,R04;R05,draft
2026-11-23,Nov 2026,R07: Опубликовать поясняющий пакет и приглашение на открытую встречу 17.12,Жители; градозащитники; архитекторы; арендаторы; культурные пользователи; журналисты; широкая публика,Существующий сайт и каналы заказчика; открытая регистрация; маркированные размещения,Редактор и специалист по работе со средствами массовой информации,Публичный пакет; доступная форма вопросов; приглашение с раскрытым организатором,Приглашение опубликовано более чем за две недели; всем группам доступен одинаковый порядок участия,R06,draft
2026-11-23,Nov 2026,R08: Подготовить спикеров; макеты печати и раскадровку видео,Спикеры; сотрудники и инвесторы «Эталона»; чиновники и депутаты; будущие арендаторы и покупатели,Рабочая репетиция; внутренний брифинг; единая справка для ответов,Руководитель коммуникационной кампании,Макеты и сценарий для проверки; спикеры с распределёнными темами и пределами полномочий,Ответы опираются на опубликованные материалы; сотрудники не получают заданий изображать независимую поддержку,R06;R05,draft
2026-11-23,Nov 2026,R32: Открыть страницу проекта с вопросами и ответами вместе с поясняющим пакетом,Жители; градозащитники; архитекторы; журналисты; широкая публика,Сайт заказчика,Редактор и специалист по работе со средствами массовой информации,"Страница со схемой по корпусам, ответами, формой вопросов и датой следующего обновления",Страница опубликована одновременно с R07; на новые вопросы ответ или срок ответа в течение пяти рабочих дней,R06; B064,draft
2026-11-30,Nov 2026,R09: Согласовать макеты печати и сценарий перед производством,Заказчик; редакция; производственные подрядчики,Письменное согласование 30.11–04.12,Представитель заказчика,Разрешение на печать и съёмку; подтверждённый тираж и доступ для съёмки,Пять рабочих дней на проверку; производство начинается после разрешения; при задержке выпуск переносится,R08,draft
2026-11-30,Nov 2026,R10: Подтвердить площадку; модератора и технический план первой встречи,Участники открытой встречи,Арендованный зал и трансляция,Координатор мероприятия со стороны заказчика,Подтверждение бронирования; схема регистрации; правила вопросов; план доступности,Вместимость и дистанционное участие подтверждены; несогласие с проектом не ограничивает регистрацию,R07;R05,draft
2026-12-07,Dec 2026,R11: Напечатать памятки и провести один съёмочный день,Жители; участники встречи; широкая публика,Типография; съёмка спикера и разрешённых видов,Продюсер контента,Памятки после проверки пробного экземпляра; исходные видеоматериалы,Печать до 11.12 с запасом доставки до 15.12; съёмка 07–08.12 в пределах одного дня; новые сооружения не создаются,R09,draft
2026-12-07,Dec 2026,R12: Повторить приглашение и проверить трансляцию первой встречи,Жители; градозащитники; архитекторы; арендаторы; культурные пользователи; журналисты,Существующие каналы; приём вопросов; техническая репетиция,Координатор мероприятия со стороны заказчика,Список тем без персональных данных; подтверждённые спикеры и техника,Проверены звук; доступ к трансляции и порядок регистрации вопросов; заданий на поддержку проекта нет,R10,draft
2026-12-14,Dec 2026,R13: Провести открытую встречу 17.12 о параметрах проекта и наследии,Жители; градозащитники; архитекторы; арендаторы; культурные пользователи; журналисты; представители города,Арендованный зал; трансляция; приём письменных вопросов,Модератор открытой встречи,Запись встречи и протокол вопросов; список вопросов требующих проверки,Все поступившие вопросы зарегистрированы; для неотвеченных назначены роли и даты ответа; число участников фиксируется без выдуманной цели,R11;R12,draft
2026-12-14,Dec 2026,R14: Завершить черновой монтаж двух роликов с субтитрами,Заказчик; редакция,Рабочие версии видео,Продюсер контента,Два черновых ролика и расшифровки к 18.12,На монтаж предусмотрено до двух рабочих недель после съёмки; расшифровки совпадают с содержанием,R11,draft
2026-12-21,Dec 2026,R15: Согласовать ответы первой встречи; видео и порядок праздничного дежурства,Заказчик; спикеры; дежурная команда,Письменное согласование 21–25.12,Представитель заказчика,Согласованные ответы; правки к роликам; график дежурства и разрешённые ответы,Пять рабочих дней на проверку; каждому открытому вопросу назначен срок; доплаты за дежурства внесены в бюджет,R13;R14,draft
2026-12-28,Dec 2026,R16: До 30.12 опубликовать согласованные ответы и завершить правки видео; с 31.12 перейти на дежурство,Участники встречи; жители; широкая публика,Существующий сайт; каналы заказчика; приёмная,Редактор и специалист по работе со средствами массовой информации,Опубликованные ответы и нерешённые вопросы; готовые ролики для января; объявленный график связи,Все обычные согласования завершены до 31.12; с 31.12 только приём обращений и срочная передача по утверждённому порядку,R15,draft
2027-01-04,Jan 2027,R17: Поддерживать только праздничное дежурство и учёт обращений,Жители; арендаторы; культурные пользователи; журналисты,Действующая приёмная и мониторинг публичных источников,Дежурный специалист по обращениям,Журнал обращений и срочных передач ответственным,Все обращения недели зарегистрированы; обычные производства; встречи и согласования не назначаются,R16,draft
2027-01-11,Jan 2027,R18: 11.01 сохранить дежурство; 12–15.01 разобрать накопившиеся вопросы,Заявители; заказчик; спикеры,Приёмная; внутренний разбор,Аналитик и специалист по обращениям,Реестр ответов после паузы и заданий на проверку,Для всех неотвеченных обращений за 31.12–11.01 назначены ответственный и дата; новая пятидневная проверка начинается с 18.01,R17,draft
2027-01-18,Jan 2027,R19: Опубликовать согласованные ролики и подготовить обновление сообщений по вопросам аудитории,Жители; широкая публика; будущие арендаторы и покупатели; журналисты,Существующие каналы; ролики с субтитрами; маркированное распространение,Редактор и специалист по работе со средствами массовой информации,Два опубликованных ролика; черновик обновлённых ответов и программы второй встречи,Публикуются версии одобренные в декабре; спорные новые формулировки проходят отдельную проверку,R16;R18,draft
2027-01-18,Jan 2027,R20: Сопоставить обращения и публичную дискуссию с исходным замером,Заказчик; коммуникационная команда,Аналитическая записка,Аналитик и специалист по обращениям,Таблица тем и сроков ответов; уточнённая карта аудиторий,Для каждого показателя указаны период; знаменатель; источники и ограничения сравнения; изменение отношения не приписывается кампании автоматически,R02;R18,draft
2027-01-25,Jan 2027,R21: Согласовать обновлённые ответы и приглашение на встречу 18.02,Заказчик; проектная команда; спикеры,Письменное согласование 25–29.01,Представитель заказчика,Разрешённые к публикации материалы и задания на допечатку,Пять рабочих дней на проверку; программа отвечает оставшимся вопросам и не обещает пересмотра утверждённого проекта,R19;R20,draft
2027-02-01,Feb 2027,R22: Открыть регистрацию на вторую встречу и выпустить обновлённые материалы,Жители; градозащитники; архитекторы; арендаторы; культурные пользователи; журналисты; сотрудники и инвесторы «Эталона»,Существующий сайт; каналы заказчика; маркированные размещения; печатная памятка,Редактор и специалист по работе со средствами массовой информации,Приглашение на 18.02; обновлённые ответы; допечатка при подтверждённой потребности,Приглашение опубликовано более чем за две недели; тираж проверен по остаткам; пять рабочих дней на печать и запас доставки,R21,draft
2027-02-08,Feb 2027,R23: Подготовить вторую встречу и передать на согласование пакет завершения кампании,Заказчик; жители; арендаторы; культурные пользователи,Техническая репетиция; внутреннее согласование 08–19.02,Руководитель коммуникационной кампании,План встречи; контакты для обращений; подтверждённые сведения о начале работ; порядок передачи,На проверку пакета выделены две недели; дата выхода техники и право раскрытия подтверждены; неподтверждённые сроки не публикуются,R22;PRE02,draft
2027-02-15,Feb 2027,R24: Провести вторую открытую встречу 18.02 и передать ответы на проверку 19.02,Жители; градозащитники; архитекторы; арендаторы; культурные пользователи; журналисты; представители города,Арендованный зал; трансляция; приём вопросов,Модератор открытой встречи,Запись и протокол; ответы для проверки 19–26.02; открытые вопросы с владельцами,Все поступившие вопросы учтены; проверка ответов занимает не менее пяти рабочих дней по календарю заказчика,R22;R23,draft
2027-02-15,Feb 2027,R33: Провести итоговый онлайн-опрос той же методикой,Жители района и соседних районов,Онлайн-панель подрядчика,Аналитик и специалист по обращениям,Сравнение с исходным замером для итоговой оценки (R28),"400 заполненных анкет до 26.02; изменения показаны с выборкой и ограничениями, без выводов о причинах",R31; B066,draft
2027-02-22,Feb 2027,R25: До 26.02 завершить основной этап и передать сопровождение заказчику,Жители; арендаторы; культурные пользователи; журналисты; заказчик,Существующий сайт; приёмная; внутренний акт передачи,Руководитель коммуникационной кампании,Итоговые согласованные ответы; подтверждённые уведомления; контакты; журнал открытых вопросов; доступы и материалы,К 26.02 основной этап закрыт; публикации только после проверки; при задержке ответа опубликованы причина и дата; у каждого вопроса есть владелец,R23;R24,draft
2027-03-01,Mar 2027,R26: Проверить передачу обращений; при необходимости поддерживать ответы только до выхода техники,Заказчик; заявители,Действующая приёмная и внутренний акт передачи,Ответственный за обращения со стороны заказчика,Подтверждение приёма материалов и журнала; дата завершения поддержки консультантов,После выхода техники новые обращения ведёт заказчик; активные размещения и новые мероприятия кампании не запускаются,R25;PRE02,draft
2027-03-08,Mar 2027,R27: С 09.03 сверить документы подрядчиков и фактические расходы,Заказчик; бухгалтерия; подрядчики,Рабочая смета и акты,Руководитель коммуникационной кампании,Сверка обязательств; налогов; использованного и оставшегося резерва,Все суммы подтверждены документами; расходы и оставшиеся обязательства проверены против лимита 10000000 рублей,R25;R26,draft
2027-03-15,Mar 2027,R28: Подготовить итоговую оценку коммуникаций за ноябрь–февраль,Заказчик,Аналитическая записка и таблицы,Аналитик и специалист по обращениям,Результаты по выполненным работам; вопросам и публичной дискуссии,Показатели имеют период и знаменатель; ограничения выборки раскрыты; причинный эффект кампании без отдельного исследования не заявлен,R20;R25;R27,draft
2027-03-22,Mar 2027,R29: Согласовать итоговую оценку и закрывающие документы,Заказчик; бухгалтерия,Письменное согласование 22–26.03,Представитель заказчика,Принятые результаты и список исправлений при наличии,Пять рабочих дней на проверку; все открытые обязательства имеют ответственного и срок,R28,draft
2027-03-29,Mar 2027,R30: До 31.03 передать окончательные материалы и завершить расчёты,Заказчик; бухгалтерия,Архив материалов и акт завершения,Руководитель коммуникационной кампании,Архив с сохранёнными исходниками; итоговая смета; переданные нерешённые обращения,Сохранность исходных материалов проверена; бюджет сверён; незавершённые расчёты явно перечислены,R29,draft
